# Prototype

Schedule from OmniPlan, 2014-03-05 to 2014-05-02.
Project start 2014-03-04

## Resources

| Resource | Group |
| --- | --- |
| Resource 1 | staff |
| Equipment 1 | equipment |
| Material 1 | material |
| Group 1 | group |
| 博一 李 | staff |
| 明 杨 | staff |
| 泽彪 黄 | staff |
| 峰 邱 | staff |
| 大畅 刘 | staff |
| 韧 李 | staff |

## Schedule

| ID | WBS | Task | Type | Start | Predecessors | Complete | Constraint | Resources | Work | Actual work |
| --- | --- | --- | --- | --- | --- | --- | --- | --- | --- | --- |
| 1 | 1 | **项目计划** |  | 2014-03-05 |  |  |  |  |  |  |
| 2 | 1.1 | 人员组成与分工 |  | 2014-03-05 |  | 100% |  | 明 杨; 博一 李 | 8h | 8h |
| 3 | 1.2 | 风险评估 |  | 2014-03-05 |  | 100% |  | 明 杨; 博一 李 | 8h | 8h |
| 4 | 1.3 | 进度安排 |  | 2014-03-06 | 2 | 100% |  | 明 杨; 博一 李 | 8h | 8h |
| 5 | 2 | 完成计划 | milestone | 2014-03-07 | 1 |  |  |  |  |  |
| 6 | 3 | **项目设计** |  | 2014-03-07 | 5 |  |  |  |  |  |
| 7 | 3.1 | **需求分析** |  | 2014-03-07 |  |  |  |  |  |  |
| 8 | 3.1.1 | 项目 Scope |  | 2014-03-07 |  | 100% |  | 明 杨; 博一 李 | 2h | 2h |
| 9 | 3.1.2 | **Use Cases** |  | 2014-03-08 |  |  |  |  |  |  |
| 10 | 3.1.2.1 | Use Case Diagram |  | 2014-03-08 |  | 100% |  | 明 杨 | 3h | 3h |
| 11 | 3.1.2.2 | Use Case Specification |  | 2014-03-08 | 10 | 100% |  | 明 杨 | 3h | 3h |
| 12 | 3.2 | 完成需求分析 | milestone | 2014-03-09 | 7 |  |  |  |  |  |
| 13 | 3.3 | **概要设计** |  | 2014-03-11 | 12 |  |  |  |  |  |
| 14 | 3.3.1 | **数据库设计 ERD** |  | 2014-03-20 |  |  |  |  |  |  |
| 15 | 3.3.1.1 | 服务端数据库设计 ERD |  | 2014-03-20 |  | 100% |  | 明 杨; 博一 李 | 8h | 8h |
| 16 | 3.3.2 | 界面设计 |  | 2014-03-11 |  | 100% |  | 大畅 刘 | 16h | 16h |
| 17 | 3.4 | 完成概要设计 | milestone | 2014-03-23 | 13 |  |  |  |  |  |
| 18 | 3.5 | **详细设计** |  | 2014-03-23 | 17 |  |  |  |  |  |
| 19 | 3.5.1 | **Logic View** |  | 2014-04-03 |  |  |  |  |  |  |
| 20 | 3.5.1.1 | Class Diagram |  | 2014-04-03 |  |  | start no earlier than 2014-04-04 |  | 16h |  |
| 21 | 3.5.2 | Process View |  | 2014-03-23 |  |  |  |  |  |  |
| 22 | 3.5.3 | Development View |  | 2014-03-23 |  |  |  |  |  |  |
| 23 | 3.5.4 | **Physical View** |  | 2014-04-03 |  |  |  |  |  |  |
| 24 | 3.5.4.1 | Deployment Diagram |  | 2014-04-03 |  | 100% | start no earlier than 2014-04-03 |  | 4h | 4h |
| 25 | 3.6 | 完成详细设计 | milestone | 2014-04-04 | 18 |  |  |  |  |  |
| 26 | 4 | 完成设计 | milestone | 2014-04-04 | 25 |  |  |  |  |  |

| ID | WBS | Task | Start | Predecessors | Complete | Constraint | Resources | Work | Actual work |
| --- | --- | --- | --- | --- | --- | --- | --- | --- | --- |
| 27 | 5 | **项目构建** | 2014-03-25 |  |  |  |  |  |  |
| 28 | 5.1 | **PHP后台** | 2014-03-25 |  |  |  |  |  |  |
| 29 | 5.1.1 | **PHP后台联通携程API** | 2014-03-25 |  | 77% |  |  | 32h | 24.5h |
| 30 | 5.1.1.1 | PHP后台联通携程API | 2014-03-25 |  | 100% |  | 明 杨 | 24.5h | 24.5h |
| 31 | 5.1.1.2 | PHP后台联通携程API | 2014-03-25 |  |  | start no earlier than 2014-04-04 | 明 杨 | 7.5h |  |
| 32 | 5.1.2 | 订阅机票后台实现 |  | 29, 33 |  | start no earlier than 2014-04-06 | 明 杨; 韧 李 | 56h |  |
| 33 | 5.1.3 | 服务器数据库实现 |  |  |  | start no earlier than 2014-04-04 | 明 杨 | 8h |  |
| 34 | 5.1.4 | Apple Push Notification Server后台 | 2014-04-03 |  | 20% | start no earlier than 2014-04-03 | 博一 李 | 56h | 11.2h |
| 35 | 5.2 | **iOS 前台** | 2014-04-01 | 16 |  |  |  |  |  |
| 36 | 5.2.1 | **客户端数据持久化实现** | 2014-04-01 |  |  |  |  |  |  |
| 37 | 5.2.1.1 | **联系人信息生成** | 2014-04-01 |  | 75% |  |  | 16h | 12h |
| 38 | 5.2.1.1.1 | 联系人信息生成 | 2014-04-01 |  | 100% |  | 博一 李 | 12h | 12h |
| 39 | 5.2.1.1.2 | 联系人信息生成 | 2014-04-01 |  |  | start no earlier than 2014-04-04 | 博一 李 | 4h |  |
| 40 | 5.2.2 | 测试携程 API 联通 | 2014-04-07 |  | 62% |  | 博一 李 | 32h | 20h |
| 41 | 5.2.3 | **搜索机票** | 2014-04-12 | 40 |  |  |  |  |  |
| 42 | 5.2.3.1 | 搜索机票界面 | 2014-04-12 |  |  |  | 峰 邱 | 8h |  |
| 43 | 5.2.3.2 | 搜索机票逻辑 | 2014-04-12 |  |  |  | 峰 邱 | 8h |  |
| 44 | 5.2.4 | **订阅机票** | 2014-04-13 | 41, 36 |  |  |  |  |  |
| 45 | 5.2.4.1 | 订阅机票界面 | 2014-04-13 |  |  |  | 峰 邱 | 8h |  |
| 46 | 5.2.4.2 | 订阅机票逻辑 | 2014-04-14 |  |  |  | 峰 邱 | 8h |  |
| 47 | 5.2.5 | 联通APNS | 2014-04-12 | 34 |  |  | 博一 李 | 16h |  |
| 48 | 5.2.6 | **订单处理** | 2014-04-13 | 41 |  |  |  |  |  |
| 49 | 5.2.6.1 | 订单处理界面实现 | 2014-04-13 |  |  |  | 大畅 刘 | 8h |  |
| 50 | 5.2.6.2 | 订单处理逻辑 | 2014-04-16 |  |  |  | 大畅 刘 | 8h |  |

| ID | WBS | Task | Type | Start | Predecessors | Complete | Constraint | Resources | Work | Actual work |
| --- | --- | --- | --- | --- | --- | --- | --- | --- | --- | --- |
| 51 | 5.2.7 | **购买机票** |  | 2014-04-20 | 48 |  |  |  |  |  |
| 52 | 5.2.7.1 | 购买机票界面 |  | 2014-04-20 |  |  |  | 泽彪 黄 | 8h |  |
| 53 | 5.2.7.2 | 购买机票逻辑 |  | 2014-04-24 |  |  |  | 泽彪 黄 | 8h |  |
| 54 | 5.3 | **Web 宣传页** |  | 2014-04-06 |  |  |  |  |  |  |
| 55 | 5.3.1 | web 页面设计 |  | 2014-04-06 |  | 100% |  | 大畅 刘 | 8h | 8h |
| 56 | 5.3.2 | web 页面实现 |  | 2014-04-08 | 55 | 100% |  | 泽彪 黄 | 8h | 8h |
| 57 | 5.4 | **数据源扩展** |  | 2014-04-04 |  |  |  |  |  |  |
| 58 | 5.4.1 | 爬虫技术研究 |  | 2014-04-04 |  | 20% |  | 韧 李 | 80h | 16h |
| 59 | 6 | 完成构建 | milestone | 2014-04-28 | 27 |  |  |  |  |  |
| 60 | 7 | **产品测试** |  | 2014-04-01 |  |  |  |  |  |  |
| 61 | 7.1 | **Component Testing** |  | 2014-04-01 |  | 11% |  |  | 801.5h | 88.5h |
| 62 | 7.1.1 | Component Testing |  | 2014-04-01 |  | 100% | start no earlier than 2014-04-01 | 韧 李; 大畅 刘; 峰 邱; 泽彪 黄; 明 杨; 博一 李 | 88.5h | 88.5h |
| 63 | 7.1.2 | Component Testing |  | 2014-04-01 |  |  | start no earlier than 2014-04-04 | 韧 李; 大畅 刘; 峰 邱; 泽彪 黄; 明 杨; 博一 李 | 713h |  |
| 64 | 7.2 | Integration Testing |  | 2014-04-24 | 61 |  |  | 博一 李; 明 杨; 泽彪 黄; 峰 邱; 大畅 刘; 韧 李 | 112h |  |
| 65 | 7.3 | System Testing |  | 2014-04-28 | 64 |  |  | 博一 李; 明 杨; 泽彪 黄; 峰 邱; 大畅 刘; 韧 李 | 56h |  |
| 66 | 7.4 | Acceptance Testing |  | 2014-04-29 | 65 |  |  | 博一 李; 明 杨; 泽彪 黄; 峰 邱; 大畅 刘; 韧 李 | 84h |  |
| 67 | 8 | 完成测试 | milestone | 2014-05-02 | 60 |  |  |  |  |  |
| 68 | 9 | **产品部署** |  | 2014-05-02 | 67 |  |  |  |  |  |
| 69 | 9.1 | 申请审核 |  | 2014-05-02 |  |  |  |  | 56h |  |
